# Desarrollo de la Base de Datos de cliente

Schedule from MS Project, 2013-05-29 to 2013-10-11.
Centrefile

## Calendars

- Standard: Mon-Fri 08:00-12:00, 13:00-17:00; Sat-Sun off.

## Schedule

| ID | WBS | Task | Type | Duration | Start | Finish | Predecessors | Total slack | Free slack | Constraint | Text27 | Text29 |
| --- | --- | --- | --- | --- | --- | --- | --- | --- | --- | --- | --- | --- |
| 1 | 1 | **Administración del Proyecto** |  | 97d | 2013-05-29 | 2013-10-10 |  | 1d |  |  | Dave Kempster | 0T |
| 2 | 1.1 | Dirección del Proyecto |  | 97d | 2013-05-29 | 2013-10-10 |  | 1d |  | start no earlier than 2013-05-29 | Dave Kempster | 0T |
| 3 | 2 | **Especificación de Requisitos** |  | 20d | 2013-05-29 | 2013-06-25 |  | 0d |  |  | Dave Kempster | 0T |
| 4 | 2.1 | **Análisis de Requisitos** |  | 9d | 2013-05-29 | 2013-06-10 |  | 0d |  |  | Dave Kempster | 0T |
| 5 | 2.1.1 | Investigar entorno actual |  | 4d | 2013-05-29 | 2013-06-03 |  | 0d |  | start no earlier than 2013-05-29 | Dave Kempster | 0T |
| 6 | 2.1.2 | Modelar el Flujo de datos |  | 2d | 2013-06-04 | 2013-06-05 | 5 | 0d |  |  | Dave Kempster | 0T |
| 7 | 2.1.3 | Evaluar los riesgos |  | 2d | 2013-06-06 | 2013-06-07 | 6 | 0d |  |  | Dave Kempster | 0T |
| 8 | 2.1.4 | Análisis de requisitos completado |  | 1d | 2013-06-10 | 2013-06-10 | 7 | 0d |  |  | Dave Kempster | 0T |
| 9 | 2.2 | **Definición de requisitos** |  | 11d | 2013-06-11 | 2013-06-25 |  | 0d |  |  | Dave Kempster | 0T |
| 10 | 2.2.1 | Definir requisitos |  | 4d | 2013-06-11 | 2013-06-14 | 8 | 0d |  |  | Dave Kempster | 0T |
| 11 | 2.2.2 | Escribir documento de requisitos |  | 2d | 2013-06-17 | 2013-06-18 | 10 | 0d |  |  | Dave Kempster | 0T |
| 12 | 2.2.3 | Circular para su revisión |  | 4d | 2013-06-19 | 2013-06-24 | 11 | 0d |  |  | Dave Kempster | 0T |
| 13 | 2.2.4 | Actualizar y Finalizar |  | 1d | 2013-06-25 | 2013-06-25 | 12 | 0d |  |  | Dave Kempster | 0T |
| 14 | 2.3 | Especificación de requisitos completado | milestone | 0d | 2013-06-25 | 2013-06-25 | 13 | 0d |  |  | Dave Kempster | 0T |
| 15 | 3 | **Diseño del Sistema** |  | 34d | 2013-06-26 | 2013-08-12 |  | 0d |  |  | Dave Kempster | 0T |
| 16 | 3.1 | **Diseño Lógico** |  | 11d | 2013-06-26 | 2013-07-10 |  | 0d |  |  | Dave Kempster | 0T |
| 17 | 3.1.1 | Investigar opciones de sistemas |  | 4d | 2013-06-26 | 2013-07-01 | 14 | 0d |  |  | Dave Kempster | 0T |
| 18 | 3.1.2 | Crear el diseño Lógico |  | 5d | 2013-07-02 | 2013-07-08 | 17 | 0d |  |  | Dave Kempster | 0T |
| 19 | 3.1.3 | Documentar el diseño lógico |  | 2d | 2013-07-09 | 2013-07-10 | 18 | 0d |  |  | Dave Kempster | 0T |
| 20 | 3.2 | **Diseño Físico** |  | 18d | 2013-07-11 | 2013-08-05 |  | 0d |  |  | Dave Kempster | 0T |
| 21 | 3.2.1 | Crear el Diseño Físico |  | 8d | 2013-07-11 | 2013-07-22 | 19 | 0d |  |  | Dave Kempster | 0T |
| 22 | 3.2.2 | Crear especificaciones de prueba |  | 14d | 2013-07-17 | 2013-08-05 | 21FS-5% | 0d |  |  | Dave Kempster | 0T |
| 23 | 3.2.3 | Desarrollar procedimiento de Backup/recuperación |  | 1d | 2013-07-23 | 2013-07-23 | 21 | 6d | 0d |  | Dave Kempster | 0T |
| 24 | 3.2.4 | Documentar el diseño Físico |  | 3d | 2013-07-24 | 2013-07-26 | 23 | 6d |  |  | Dave Kempster | 0T |
| 25 | 3.3 | Escribir el documento de diseño de sistemas |  | 5d | 2013-08-06 | 2013-08-12 | 24, 22 | 0d |  |  | Dave Kempster | 0T |
| 26 | 3.4 | Diseño del Sistema Completado | milestone | 0d | 2013-08-12 | 2013-08-12 | 25 | 0d |  |  | Dave Kempster | 0T |

| ID | WBS | Task | Type | Duration | Start | Finish | Predecessors | Total slack | Free slack | Text27 | Text29 |
| --- | --- | --- | --- | --- | --- | --- | --- | --- | --- | --- | --- |
| 27 | 4 | **Desarrollo** |  | 34d | 2013-08-13 | 2013-09-27 |  | 0d |  | Dave Kempster | 0T |
| 28 | 4.1 | Desarrollo de la base de datos |  | 10d | 2013-08-13 | 2013-08-26 | 26 | 0d |  | Dave Kempster | 0T |
| 29 | 4.2 | **Desarrollo de la GUI** |  | 17d | 2013-08-20 | 2013-09-11 |  | 0d |  | Dave Kempster | 0T |
| 30 | 4.2.1 | Desarrollar pantallas base |  | 6d | 2013-08-20 | 2013-08-27 | 28FS-5% | 0d |  | Dave Kempster | 0T |
| 31 | 4.2.2 | Desarrollar las pantallas de mantenimiento |  | 4d | 2013-08-28 | 2013-09-02 | 30 | 0d |  | Dave Kempster | 0T |
| 32 | 4.2.3 | Desarrollar la barra de navegación |  | 3d | 2013-09-03 | 2013-09-05 | 31 | 0d |  | Dave Kempster | 0T |
| 33 | 4.2.4 | Escribir el archivo de ayuda |  | 4d | 2013-09-06 | 2013-09-11 | 32 | 0d |  | Dave Kempster | 0T |
| 34 | 4.3 | Llenar la base de datos |  | 3d | 2013-08-27 | 2013-08-29 | 28 | 7d | 0d | Dave Kempster | 0T |
| 35 | 4.4 | Datos de prueba de calidad |  | 2d | 2013-08-30 | 2013-09-02 | 34 | 7d |  | Dave Kempster | 0T |
| 36 | 4.5 | Pruebas de aceptación |  | 12d | 2013-09-12 | 2013-09-27 | 35, 33 | 0d |  | Dave Kempster | 0T |
| 37 | 4.6 | Desarrollo completado | milestone | 0d | 2013-09-27 | 2013-09-27 | 36 | 0d |  | Dave Kempster | 0T |
| 38 | 5 | Tareas de limpieza |  | 10d | 2013-09-30 | 2013-10-11 | 37 | 0d |  | Dave Kempster | 0T |
